# 需求工程甘特图

Schedule from MS Project, 2017-09-28 to 2018-01-19, 2 hours a day, costs in ¥, A marks actual dates.
user

## Calendars

- G23的日历: Mon-Sun 08:00-10:00.

## Resources

| Resource | Rate |
| --- | --- |
| 仲叶 | 30.97 |
| 汪涛 | 30.97 |
| 史晨鑫 | 30.97 |
| 任剑超 | 30.97 |
| 邱英凡 | 30.97 |

## Schedule

| ID | WBS | Task | Type | Duration | Start | Finish | Predecessors | Complete | Remaining | Actual start | Resources | Work | Actual work | Cost | Actual cost |
| --- | --- | --- | --- | --- | --- | --- | --- | --- | --- | --- | --- | --- | --- | --- | --- |
| 1 | 1 | **准备阶段** |  | 34.5d | 2017-09-28 A | 2017-10-28 |  | 50% | 17.25d |  |  | 63.6h | 54h | 1,969.69 | 1,672.38 |
| 2 | 1.1 | 团队成立 | milestone, manual | 0d | 2017-09-28 A | 2017-09-28 A |  | 100% |  |  |  |  |  |  |  |
| 3 | 1.2 | 小组会议 | milestone, manual | 0d | 2017-09-28 A | 2017-09-28 A |  | 100% |  |  |  |  |  |  |  |
| 4 | 1.3 | 软件安装 | milestone, manual | 0d | 2017-09-29 A | 2017-09-29 A | 2 | 100% |  |  |  |  |  |  |  |
| 5 | 1.4 | 搜集文档模板 | manual | 2d | 2017-10-02 A | 2017-10-06 | 2 |  | 2d |  | 邱英凡 | 4h |  | 123.88 |  |
| 6 | 1.5 | 可行性分析 | manual | 5d | 2017-10-11 A | 2017-10-15 A | 5 | 100% |  |  | 邱英凡 [20%]; 任剑超 [20%]; 史晨鑫 [20%]; 汪涛 [20%]; 仲叶 [20%] | 50h | 50h | 1,548.5 | 1,548.5 |
| 7 | 1.6 | QA计划 | manual | 3d | 2017-10-13 A | 2017-10-15 A |  | 100% |  |  |  |  |  |  |  |
| 8 | 1.7 | 项目总体计划 | manual | 8d | 2017-10-15 A | 2017-10-22 | 6 | 13% | 7d |  | 邱英凡 [20%]; 任剑超 [20%] | 9.6h | 4h | 297.31 | 123.88 |
| 9 | 2 | **计划阶段** |  | 6.5d | 2017-10-25 | 2017-10-28 A |  | 100% |  | 2017-10-15 |  | 28h | 28h | 867.16 | 867.16 |
| 10 | 2.1 | wbs初稿 | manual | 1d | 2017-10-25 A | 2017-10-25 A |  | 100% |  |  | 仲叶 [20%] | 2h | 2h | 61.94 | 61.94 |
| 11 | 2.2 | 项目总体计划 | manual | 1d | 2017-10-26 A | 2017-10-26 A |  | 100% |  |  | 史晨鑫 [20%]; 汪涛 [20%]; 仲叶 [20%] | 6h | 6h | 185.82 | 185.82 |
| 12 | 2.3 | 项目章程 | manual | 1d | 2017-10-15 A | 2017-10-15 A | 8 | 100% |  |  | 史晨鑫 [20%]; 汪涛 [20%] | 4h | 4h | 123.88 | 123.88 |
| 13 | 2.4 | 项目章程 | manual | 1d | 2017-10-26 A | 2017-10-26 A |  | 100% |  |  | 史晨鑫 [20%]; 汪涛 [20%] | 4h | 4h | 123.88 | 123.88 |
| 14 | 2.5 | 需求工程项目计划 | manual | 3d | 2017-10-26 A | 2017-10-28 A | 12 | 100% |  |  | 史晨鑫 [20%]; 汪涛 [20%] | 12h | 12h | 371.64 | 371.64 |
| 15 | 3 | **执行阶段** |  | 51d | 2017-11-01 A | 2017-12-21 |  | 46% | 27.66d |  |  | 122.4h | 74.08h | 3,790.73 | 2,294.26 |
| 16 | 3.1 | wbs修改 | manual | 1d | 2017-11-01 A | 2017-11-01 A |  | 100% |  |  | 仲叶 [20%]; 汪涛 [20%] | 2h | 2h | 61.94 | 61.94 |
| 17 | 3.2 | **需求工程** |  | 54.5d | 2017-11-01 | 2017-12-21 |  | 45% | 29.75d | 2017-11-02 |  | 120.4h | 72.08h | 3,728.79 | 2,232.32 |
| 18 | 3.2.1 | 小组会议 | milestone, manual | 0d | 2017-11-02 A | 2017-11-02 A |  | 100% |  |  |  |  |  |  |  |
| 19 | 3.2.2 | 需求工程项目计划 | manual | 1d | 2017-11-02 A | 2017-11-02 A |  | 100% |  |  | 史晨鑫 [20%]; 汪涛 [20%] | 4h | 4h | 123.88 | 123.88 |
| 20 | 3.2.3 | **需求获取** |  | 21d | 2017-11-03 A | 2017-11-23 |  | 56% | 9.27d |  |  | 62.6h | 50.68h | 1,938.72 | 1,569.56 |
| 21 | 3.2.3.1 | 小组会议 | manual | 1d | 2017-11-03 A | 2017-11-03 A |  | 100% |  |  |  |  |  |  |  |
| 22 | 3.2.3.2 | 需求工程项目计划 | manual | 1d | 2017-11-03 A | 2017-11-03 A |  | 100% |  |  | 史晨鑫 [20%]; 汪涛 [20%]; 仲叶 [20%] | 6h | 6h | 185.82 | 185.82 |
| 23 | 3.2.3.3 | 项目章程 | manual | 1d | 2017-11-03 A | 2017-11-03 A |  | 100% |  |  | 邱英凡 [20%] | 2h | 2h | 61.94 | 61.94 |
| 24 | 3.2.3.4 | 定义愿景和范围 | manual | 6d | 2017-11-03 A | 2017-11-08 A | 12 | 100% |  |  | 邱英凡 [20%]; 史晨鑫; 汪涛; 仲叶 | 2.4h | 2.4h | 74.33 | 74.33 |
| 25 | 3.2.3.5 | 小组会议 | manual | 1d | 2017-11-05 A | 2017-11-05 A |  | 100% |  |  |  |  |  |  |  |
| 26 | 3.2.3.6 | 识别用户群、选择产品代言人 |  | 3d | 2017-11-04 A | 2017-11-06 A | 24 | 100% |  |  | 史晨鑫 [20%]; 汪涛 [20%] | 2.4h | 2.4h | 74.33 | 74.33 |
| 27 | 3.2.3.7 | 用户群分类 | manual | 2d | 2017-11-05 A | 2017-11-06 A |  | 100% |  |  | 仲叶 [20%] | 4h | 4h | 123.88 | 123.88 |
| 28 | 3.2.3.8 | 小组会议 | manual | 1d | 2017-11-10 A | 2017-11-10 A |  | 100% |  |  |  |  |  |  |  |
| 29 | 3.2.3.9 | 组织焦点小组 | manual | 4d | 2017-11-08 A | 2017-11-11 A | 24 | 100% |  |  | 邱英凡 [20%]; 仲叶 [20%] | 3h | 3h | 92.91 | 92.91 |
| 30 | 3.2.3.10 | 识别用户需求 | manual | 8d | 2017-11-08 A | 2017-11-16 A | 24 | 100% |  |  | 任剑超 [20%]; 史晨鑫 [20%] | 6.4h | 6.4h | 198.21 | 198.21 |
| 31 | 3.2.3.11 | 用户群分类 | manual | 1d | 2017-11-12 A | 2017-11-12 A |  | 100% |  |  | 仲叶 [20%] | 2h | 2h | 61.94 | 61.94 |
| 32 | 3.2.3.12 | 小组会议 | milestone, manual | 0d | 2017-11-13 A | 2017-11-13 A |  | 100% |  |  |  |  |  |  |  |
| 33 | 3.2.3.13 | 需求获取访谈 | manual | 28d | 2017-11-13 A | 2017-12-10 | 30 | 7% | 26d |  | 汪涛 [10%]; 仲叶; 邱英凡; 任剑超 [10%]; 史晨鑫 | 6h | 0.8h | 185.82 | 24.78 |
| 34 | 3.2.3.14 | 小组会议 | milestone, manual | 0d | 2017-11-17 A | 2017-11-17 A |  | 100% |  |  |  |  |  |  |  |
| 35 | 3.2.3.15 | 举行需求获取讨论会 | manual | 2d | 2017-11-09 A | 2017-11-10 A | 34 | 100% |  |  | 邱英凡 [10%]; 任剑超 [10%]; 史晨鑫 [10%]; 汪涛 [10%]; 仲叶 [10%] | 2h | 2h | 61.94 | 61.94 |
| 36 | 3.2.3.16 | 分发调查问卷 | manual | 3d | 2017-11-09 A | 2017-11-11 A | 34 | 100% |  |  | 仲叶 [20%] | 1.2h | 1.2h | 37.16 | 37.16 |
| 37 | 3.2.3.17 | 分析文档 | manual | 8d | 2017-11-12 A | 2017-11-19 A | 36 | 100% |  |  | 任剑超 [20%]; 史晨鑫 [20%]; 汪涛 | 9.6h | 9.6h | 297.31 | 297.31 |
| 38 | 3.2.3.18 | 重用已有的需求 | manual | 24d | 2017-11-15 A | 2017-12-08 | 34 | 30% | 16.8d |  | 邱英凡; 任剑超 [20%]; 史晨鑫; 仲叶 | 9.6h | 2.88h | 297.31 | 89.19 |
| 39 | 3.2.3.19 | 项目章程 | manual | 1d | 2017-11-18 A | 2017-11-18 A |  | 100% |  |  | 汪涛 | 2h | 2h | 61.94 | 61.94 |
| 40 | 3.2.3.20 | 用户群分类 | manual | 1d | 2017-11-23 A | 2017-11-23 A |  | 100% |  |  | 仲叶 | 2h | 2h | 61.94 | 61.94 |
| 41 | 3.2.3.21 | 定义愿景和范围 | manual | 1d | 2017-11-23 A | 2017-11-24 A |  | 100% |  |  | 史晨鑫 | 2h | 2h | 61.94 | 61.94 |
| 42 | 3.2.3.22 | 可行性分析 | milestone, manual | 0d | 2017-11-23 A | 2017-11-23 A |  | 100% |  |  | 仲叶 |  |  |  |  |

Notes:
- 5: 邱英凡
- 6: 任剑超
- 8: 任剑超
- 10: 仲叶
- 11: 汪涛
- 12: 汪涛
- 13: 汪涛
- 14: 汪涛
- 16: 仲叶
- 19: 汪涛
- 22: 史晨鑫
- 23: 邱英凡
- 24: 史晨鑫
- 27: 仲叶
- 31: 仲叶
- 39: 汪涛
- 40: 仲叶
- 41: 史晨鑫
- 42: 仲叶

| ID | WBS | Task | Type | Duration | Start | Finish | Predecessors | Complete | Remaining | Total slack | Constraint | Resources | Work | Actual work | Cost | Actual cost |
| --- | --- | --- | --- | --- | --- | --- | --- | --- | --- | --- | --- | --- | --- | --- | --- | --- |
| 43 | 3.2.4 | **需求分析** |  | 18d | 2017-11-24 A | 2017-12-11 |  | 57% | 7.71d |  |  |  | 25.4h | 17.4h | 786.64 | 538.88 |
| 44 | 3.2.4.1 | 小组会议 | milestone, manual | 0d | 2017-11-24 A | 2017-11-24 A |  | 100% |  |  |  |  |  |  |  |  |
| 45 | 3.2.4.2 | 应用环境建模 | manual | 2d | 2017-11-24 A | 2017-11-25 A | 37 | 100% |  |  |  | 任剑超 [20%] | 1h | 1h | 30.97 | 30.97 |
| 46 | 3.2.4.3 | 创建原型 | manual | 2d | 2017-11-26 A | 2017-11-27 A | 37 | 100% |  |  |  | 史晨鑫 [20%]; 汪涛 [20%] | 2h | 2h | 61.94 | 61.94 |
| 47 | 3.2.4.4 | 小组会议 | milestone, manual | 0d | 2017-11-27 A | 2017-11-27 A |  | 100% |  |  |  |  |  |  |  |  |
| 48 | 3.2.4.5 | 用户群分类 | manual | 1d | 2017-11-28 A | 2017-11-28 A |  | 100% |  |  |  | 邱英凡 | 2h | 2h | 61.94 | 61.94 |
| 49 | 3.2.4.6 | 需求工程项目计划 | manual | 1d | 2017-11-28 A | 2017-11-28 A |  | 100% |  |  |  | 邱英凡 | 2h | 2h | 61.94 | 61.94 |
| 50 | 3.2.4.7 | 分析实现可行性 | manual | 2d | 2017-11-28 A | 2017-11-29 A | 37 | 100% |  |  |  | 史晨鑫 [20%]; 仲叶 [20%] | 2h | 2h | 61.94 | 61.94 |
| 51 | 3.2.4.8 | 定义愿景和范围 | manual | 1d | 2017-11-29 A | 2017-11-29 A |  | 100% |  |  |  | 邱英凡 | 0.4h | 0.4h | 12.39 | 12.39 |
| 52 | 3.2.4.9 | 可行性分析 | manual | 1d | 2017-11-29 A | 2017-11-29 A |  | 100% |  |  |  | 汪涛 [20%] | 2h | 2h | 61.94 | 61.94 |
| 53 | 3.2.4.10 | 用户群分类 | manual | 1d | 2017-11-30 A | 2017-11-30 A |  | 100% |  |  |  | 仲叶 [20%] | 2h | 2h | 61.94 | 61.94 |
| 54 | 3.2.4.11 | 项目章程 | manual | 1d | 2017-11-30 A | 2017-11-30 A |  | 100% |  |  |  | 邱英凡; 仲叶 [20%] | 4h | 4h | 123.88 | 123.88 |
| 55 | 3.2.4.12 | 排列需求优先级 | manual | 1d | 2017-12-01 | 2017-12-01 | 37 |  |  |  |  | 任剑超 [20%]; 汪涛 [20%] | 0.8h |  | 24.78 |  |
| 56 | 3.2.4.13 | 小组会议 | milestone, manual | 0d | 2017-12-01 | 2017-12-01 |  |  |  |  |  |  |  |  |  |  |
| 57 | 3.2.4.14 | 创建数字字典 | manual | 2d | 2017-12-03 | 2017-12-04 | 55 |  |  |  |  | 邱英凡 [20%]; 任剑超 [20%] | 1.6h |  | 49.55 |  |
| 58 | 3.2.4.15 | 小组会议 | milestone, manual | 0d | 2017-12-04 | 2017-12-04 |  |  |  |  |  |  |  |  |  |  |
| 59 | 3.2.4.16 | 需求建模 | manual | 2d | 2017-12-05 | 2017-12-06 | 45 |  |  |  |  | 邱英凡 [20%]; 任剑超 [20%]; 仲叶 [20%] | 2.4h |  | 74.33 |  |
| 60 | 3.2.4.17 | 小组会议 | milestone, manual | 0d | 2017-12-06 | 2017-12-06 |  |  |  |  |  |  |  |  |  |  |
| 61 | 3.2.4.18 | 分析接口 | manual | 2d | 2017-12-07 | 2017-12-08 | 59 |  |  |  |  | 任剑超 [20%]; 史晨鑫 [20%] | 1.6h |  | 49.55 |  |
| 62 | 3.2.4.19 | 小组会议 | milestone, manual | 0d | 2017-12-09 | 2017-12-09 |  |  |  |  |  |  |  |  |  |  |
| 63 | 3.2.4.20 | 将需求分配到子接口 | manual | 2d | 2017-12-09 | 2017-12-10 | 61 |  |  |  |  | 汪涛 [20%]; 仲叶 [20%] | 1.6h |  | 49.55 |  |
| 64 | 3.2.5 | 小组会议 | milestone, manual | 0d | 2017-12-10 | 2017-12-10 |  |  |  |  |  |  |  |  |  |  |
| 65 | 3.2.6 | **规范说明** |  | 16d | 2017-12-15 | 2017-12-30 |  |  |  |  |  |  | 13.2h |  | 408.8 |  |
| 66 | 3.2.6.1 | 小组会议 | milestone, manual | 0d | 2017-12-15 | 2017-12-15 |  |  |  |  |  |  |  |  |  |  |
| 67 | 3.2.6.2 | 采用需求文档模板 | manual | 1d | 2017-12-15 | 2017-12-15 | 37 |  |  |  |  | 任剑超 [20%]; 汪涛 [20%]; 仲叶 [20%] | 1.2h |  | 37.16 |  |
| 68 | 3.2.6.3 | 识别需求源头 | manual | 1d | 2017-12-16 | 2017-12-16 | 46 |  |  |  |  | 邱英凡 [20%]; 仲叶 [20%]; 任剑超 [20%] | 1.2h |  | 37.16 |  |
| 69 | 3.2.6.4 | 小组会议 |  | 1d | 2017-12-16 | 2017-12-16 |  |  |  | 34d | start no earlier than 2017-12-16 |  |  |  |  |  |
| 70 | 3.2.6.5 | 为每个需求分配唯一标识 | manual | 1d | 2017-12-17 | 2017-12-17 | 68 |  |  |  |  | 邱英凡 [20%]; 史晨鑫 [20%]; 仲叶 [20%] | 1.2h |  | 37.16 |  |
| 71 | 3.2.6.6 | 记录业务规则 | manual | 1d | 2017-12-18 | 2017-12-18 |  |  |  |  |  | 任剑超 [20%]; 汪涛 [20%]; 邱英凡 [20%] | 1.2h |  | 37.16 |  |
| 72 | 3.2.6.7 | 小组会议 |  | 1d | 2017-12-19 | 2017-12-19 |  |  |  | 31d | start no earlier than 2017-12-19 |  |  |  |  |  |
| 73 | 3.2.6.8 | 描述非功能性需求 | manual | 2d | 2017-12-20 | 2017-12-21 | 68 |  |  |  |  | 史晨鑫 [20%]; 汪涛 [20%]; 邱英凡 [20%] | 2.4h |  | 74.33 |  |
| 74 | 3.2.6.9 | 小组会议 | manual | 1d | 2017-12-22 | 2017-12-22 |  |  |  |  |  |  |  |  |  |  |
| 75 | 3.2.6.10 | 软件需求规格说明书 | manual | 3d | 2017-12-15 | 2017-12-17 | 67 |  |  |  |  | 邱英凡 [20%]; 任剑超 [20%]; 史晨鑫 [20%]; 汪涛 [20%]; 仲叶 [20%] | 6h |  | 185.82 |  |
| 76 | 3.2.6.11 | 小组会议 | milestone, manual | 0d | 2017-12-08 | 2017-12-08 |  |  |  |  |  |  |  |  |  |  |
| 77 | 3.2.6.12 | 小组会议 | milestone, manual | 0d | 2017-12-09 | 2017-12-09 |  |  |  |  |  |  |  |  |  |  |
| 78 | 3.2.6.13 | 小组会议 | milestone, manual | 0d | 2017-12-10 | 2017-12-10 |  |  |  |  |  |  |  |  |  |  |

Notes:
- 48: 邱英凡
- 49: 邱英凡
- 51: 邱英凡
- 52: 汪涛
- 53: 仲叶
- 54: 邱英凡

| ID | WBS | Task | Type | Duration | Start | Finish | Predecessors | Resources | Work | Cost |
| --- | --- | --- | --- | --- | --- | --- | --- | --- | --- | --- |
| 79 | 3.2.7 | **需求验证** |  | 12.5d | 2017-12-11 | 2017-12-19 |  |  | 15.2h | 470.74 |
| 80 | 3.2.7.1 | 小组会议 | manual | 1d | 2017-12-11 | 2017-12-11 |  |  |  |  |
| 81 | 3.2.7.2 | 评审需求 | manual | 4d | 2017-12-11 | 2017-12-14 | 67 | 任剑超 [20%]; 邱英凡 [20%] | 3.2h | 99.1 |
| 82 | 3.2.7.3 | 小组会议 | milestone, manual | 0d | 2017-12-12 | 2017-12-12 |  |  |  |  |
| 83 | 3.2.7.4 | 测试需求 | manual | 2d | 2017-12-12 | 2017-12-13 | 67 | 史晨鑫 [20%]; 汪涛 [20%]; 仲叶 [20%] | 2.4h | 74.33 |
| 84 | 3.2.7.5 | 小组会议 | milestone, manual | 0d | 2017-12-13 | 2017-12-13 |  |  |  |  |
| 85 | 3.2.7.6 | 定义验收条件 | manual | 6d | 2017-12-13 | 2017-12-18 | 81 | 邱英凡 [20%]; 任剑超 [20%] | 4.8h | 148.66 |
| 86 | 3.2.7.7 | 小组会议 | milestone, manual | 0d | 2017-12-14 | 2017-12-14 |  |  |  |  |
| 87 | 3.2.7.8 | 模拟需求 | manual | 4d | 2017-12-02 | 2017-12-05 | 85 | 史晨鑫 [20%]; 汪涛 [20%]; 仲叶 [20%] | 4.8h | 148.66 |
| 88 | 3.2.7.9 | 小组会议 | milestone, manual | 0d | 2017-12-16 | 2017-12-16 |  |  |  |  |
| 89 | 3.2.7.10 | 小组会议 | milestone, manual | 0d | 2017-12-16 | 2017-12-16 |  |  |  |  |
| 90 | 4 | **管理阶段** |  | 30.5d | 2017-12-17 | 2018-01-12 |  |  | 69.4h | 2,149.32 |
| 91 | 4.1 | wbs修改 | manual | 27d | 2017-12-17 | 2018-01-12 |  | 史晨鑫 [5%]; 邱英凡 [5%]; 任剑超 [5%]; 汪涛 [5%]; 仲叶 [5%] | 13.5h | 418.1 |
| 92 | 4.2 | 小组会议 | milestone, manual | 0d | 2017-12-17 | 2017-12-17 |  |  |  |  |
| 93 | 4.3 | **需求管理** |  | 12.5d | 2017-12-17 | 2017-12-25 |  |  | 20.7h | 641.08 |
| 94 | 4.3.1 | 建立变更控制流程 | manual | 2d | 2017-12-17 | 2017-12-18 | 67 | 邱英凡 [20%]; 汪涛 [20%]; 仲叶 [20%] | 2.4h | 74.33 |
| 95 | 4.3.2 | 分析变更影响 | manual | 2d | 2017-12-19 | 2017-12-20 | 94 | 任剑超 [20%]; 史晨鑫 [20%]; 仲叶 [20%] | 2.4h | 74.33 |
| 96 | 4.3.3 | 小组会议 | manual | 1d | 2017-12-18 | 2017-12-18 |  |  |  |  |
| 97 | 4.3.4 | 建立基线，管理需求版本 | manual | 2d | 2017-12-19 | 2017-12-20 | 67 | 任剑超 [20%]; 汪涛 [20%] | 1.6h | 49.55 |
| 98 | 4.3.5 | 小组会议 | manual | 1d | 2017-12-20 | 2017-12-20 |  |  |  |  |
| 99 | 4.3.6 | 维护变更历史 | manual | 2d | 2017-12-20 | 2017-12-21 | 94 | 邱英凡 [20%]; 史晨鑫 [20%]; 仲叶 [20%] | 2.4h | 74.33 |
| 100 | 4.3.7 | 小组会议 | milestone, manual | 0d | 2017-12-20 | 2017-12-20 |  |  |  |  |
| 101 | 4.3.8 | 跟踪需求状态 | manual | 1d | 2017-12-21 | 2017-12-21 |  | 汪涛 [20%]; 仲叶 [20%]; 邱英凡 [20%] | 1.2h | 37.16 |
| 102 | 4.3.9 | 小组会议 | milestone, manual | 0d | 2017-12-21 | 2017-12-21 |  |  |  |  |
| 103 | 4.3.10 | 跟踪需求问题 | manual | 1d | 2017-12-22 | 2017-12-22 |  | 邱英凡 [20%]; 史晨鑫 [20%]; 仲叶 [20%] | 1.2h | 37.16 |
| 104 | 4.3.11 | 小组会议 | milestone, manual | 0d | 2017-12-22 | 2017-12-22 |  |  |  |  |
| 105 | 4.3.12 | 维护需求可跟踪矩阵 | manual | 1d | 2017-12-23 | 2017-12-23 |  | 邱英凡 [25%]; 任剑超 [25%]; 史晨鑫 [25%] | 1.5h | 46.45 |
| 106 | 4.3.13 | 小组会议 | milestone, manual | 0d | 2017-12-23 | 2017-12-23 |  |  |  |  |
| 107 | 4.3.14 | 使用需求管理工具 | manual | 2d | 2017-12-24 | 2017-12-25 | 59 | 邱英凡 [20%]; 任剑超 [20%]; 史晨鑫 [20%]; 汪涛 [20%]; 仲叶 [20%] | 4h | 123.88 |
| 108 | 4.3.15 | 小组会议 | manual | 1d | 2017-12-24 | 2017-12-24 |  |  |  |  |
| 109 | 4.3.16 | 软件需求变更文档 | manual | 2d | 2017-12-24 | 2017-12-25 |  | 邱英凡 [20%]; 任剑超 [20%]; 史晨鑫 [20%]; 汪涛 [20%]; 仲叶 [20%] | 4h | 123.88 |
| 110 | 4.4 | 小组会议 | manual | 1d | 2017-12-25 | 2017-12-25 |  |  |  |  |

Notes:
- 91: 任剑超

| ID | WBS | Task | Type | Duration | Start | Finish | Predecessors | Resources | Work | Cost |
| --- | --- | --- | --- | --- | --- | --- | --- | --- | --- | --- |
| 111 | 4.5 | **需求知识** |  | 6d | 2017-12-25 | 2017-12-30 |  |  | 7.2h | 222.98 |
| 112 | 4.5.1 | 培训业务分析师 | manual | 1d | 2017-12-25 | 2017-12-25 |  | 汪涛 [20%]; 仲叶 [20%] | 0.8h | 24.78 |
| 113 | 4.5.2 | 小组会议 | manual | 1d | 2017-12-26 | 2017-12-26 |  |  |  |  |
| 114 | 4.5.3 | 向干系人讲解需求内容 | manual | 2d | 2017-12-26 | 2017-12-27 |  | 任剑超 [20%]; 史晨鑫 [20%] | 1.6h | 49.55 |
| 115 | 4.5.4 | 小组会议 | manual | 1d | 2017-12-27 | 2017-12-27 |  |  |  |  |
| 116 | 4.5.5 | 向开发人员讲应用领域知识 | manual | 1d | 2017-12-27 | 2017-12-27 |  | 邱英凡 [20%] | 0.4h | 12.39 |
| 117 | 4.5.6 | 小组会议 | manual | 1d | 2017-12-28 | 2017-12-28 |  |  |  |  |
| 118 | 4.5.7 | 定义一个需求工程流程 | manual | 3d | 2017-12-26 | 2017-12-28 | 112 | 邱英凡 [20%]; 史晨鑫 [20%]; 仲叶 [20%] | 3.6h | 111.49 |
| 119 | 4.5.8 | 小组会议 | milestone, manual | 0d | 2017-12-29 | 2017-12-29 |  |  |  |  |
| 120 | 4.5.9 | 建立一个词汇表 | manual | 1d | 2017-12-29 | 2017-12-29 |  | 任剑超 [20%]; 汪涛 [20%] | 0.8h | 24.78 |
| 121 | 4.5.10 | 小组会议 | manual | 1d | 2017-12-30 | 2017-12-30 |  |  |  |  |
| 122 | 4.6 | **项目管理** |  | 14d | 2017-12-30 | 2018-01-12 |  |  | 28h | 867.16 |
| 123 | 4.6.1 | 选择合适的生命周期模型 | manual | 1d | 2017-12-30 | 2017-12-30 |  | 邱英凡 [20%]; 汪涛 [20%]; 仲叶 [20%] | 1.2h | 37.16 |
| 124 | 4.6.2 | 小组会议 | manual | 1d | 2017-12-31 | 2017-12-31 |  |  |  |  |
| 125 | 4.6.3 | 规划需求方案 | manual | 8d | 2017-12-29 | 2018-01-05 | 118 | 任剑超 [20%]; 史晨鑫 [20%]; 汪涛 [20%] | 9.6h | 297.31 |
| 126 | 4.6.4 | 小组会议 | milestone, manual | 0d | 2018-01-01 | 2018-01-01 |  |  |  |  |
| 127 | 4.6.5 | 小组会议 | milestone, manual | 0d | 2018-01-02 | 2018-01-02 |  |  |  |  |
| 128 | 4.6.6 | 小组会议 | milestone, manual | 0d | 2018-01-03 | 2018-01-03 |  |  |  |  |
| 129 | 4.6.7 | 系统设计与实现计划 | manual | 2d | 2018-01-03 | 2018-01-04 |  | 邱英凡 [20%]; 任剑超 [20%]; 史晨鑫 [20%]; 汪涛 [20%]; 仲叶 [20%] | 4h | 123.88 |
| 130 | 4.6.8 | 估算需求工作量 | manual | 2d | 2018-01-06 | 2018-01-07 | 125 | 邱英凡 [20%]; 汪涛 [20%] | 1.6h | 49.55 |
| 131 | 4.6.9 | 小组会议 | manual | 1d | 2018-01-06 | 2018-01-06 |  |  |  |  |
| 132 | 4.6.10 | 基于需求做计划 | manual | 2d | 2018-01-06 | 2018-01-07 | 125 | 汪涛 [20%]; 仲叶 [20%] | 1.6h | 49.55 |
| 133 | 4.6.11 | 小组会议 | manual | 1d | 2018-01-05 | 2018-01-05 |  |  |  |  |
| 134 | 4.6.12 | 发现需求决策者 | manual | 1d | 2018-01-06 | 2018-01-06 |  | 邱英凡 [20%]; 汪涛 [20%]; 仲叶 [20%] | 1.2h | 37.16 |
| 135 | 4.6.13 | 小组会议 | manual | 1d | 2018-01-06 | 2018-01-06 |  |  |  |  |
| 136 | 4.6.14 | 小组会议 | manual | 1d | 2018-01-07 | 2018-01-07 |  |  |  |  |
| 137 | 4.6.15 | 重新协商承诺 | manual | 2d | 2018-01-07 | 2018-01-08 | 136 | 邱英凡 [20%]; 仲叶 [20%] | 1.6h | 49.55 |
| 138 | 4.6.16 | 小组会议 | manual | 1d | 2018-01-08 | 2018-01-08 |  |  |  |  |
| 139 | 4.6.17 | 管理需求风险 | manual | 2d | 2018-01-09 | 2018-01-10 | 125 | 邱英凡 [20%]; 仲叶 [20%] | 1.6h | 49.55 |
| 140 | 4.6.18 | 小组会议 | manual | 1d | 2018-01-09 | 2018-01-09 |  |  |  |  |
| 141 | 4.6.19 | 跟踪记录需求工作量 | manual | 2d | 2018-01-09 | 2018-01-10 | 140 | 任剑超 [20%]; 仲叶 [20%] | 1.6h | 49.55 |
| 142 | 4.6.20 | 小组会议 | manual | 1d | 2018-01-10 | 2018-01-10 |  |  |  |  |
| 143 | 4.6.21 | 小组会议 | manual | 1d | 2018-01-11 | 2018-01-11 |  |  |  |  |
| 144 | 4.6.22 | 变更控制及影响说明 | manual | 1d | 2018-01-11 | 2018-01-11 |  | 邱英凡 [20%]; 任剑超 [20%]; 史晨鑫 [20%]; 汪涛 [20%]; 仲叶 [20%] | 2h | 61.94 |
| 145 | 4.6.23 | 回顾学到的经验 | manual | 1d | 2018-01-12 | 2018-01-12 | 143 | 邱英凡 [20%]; 任剑超 [20%]; 史晨鑫 [20%]; 汪涛 [20%]; 仲叶 [20%] | 2h | 61.94 |
| 146 | 4.6.24 | 小组会议 | milestone, manual | 0d | 2018-01-12 | 2018-01-12 |  |  |  |  |

| ID | WBS | Task | Type | Duration | Start | Finish | Predecessors | Resources | Work | Cost |
| --- | --- | --- | --- | --- | --- | --- | --- | --- | --- | --- |
| 147 | 5 | **收尾阶段** |  | 8d | 2018-01-12 | 2018-01-19 |  |  | 45h | 1,393.65 |
| 148 | 5.1 | 小组会议 | milestone, manual | 0d | 2018-01-13 | 2018-01-13 |  |  |  |  |
| 149 | 5.2 | 小组会议 | milestone, manual | 0d | 2018-01-14 | 2018-01-14 |  |  |  |  |
| 150 | 5.3 | 各文档检查 | manual | 5d | 2018-01-13 | 2018-01-17 | 145 | 邱英凡 [50%]; 任剑超 [50%]; 史晨鑫 [50%]; 汪涛 [50%]; 仲叶 [50%] | 25h | 774.25 |
| 151 | 5.4 | 小组会议 | milestone, manual | 0d | 2018-01-15 | 2018-01-15 |  |  |  |  |
| 152 | 5.5 | 小组会议 | milestone, manual | 0d | 2018-01-16 | 2018-01-16 |  |  |  |  |
| 153 | 5.6 | 系统测试计划 | manual | 1d | 2018-01-18 | 2018-01-18 |  | 邱英凡; 任剑超; 史晨鑫; 汪涛; 仲叶 | 10h | 309.7 |
| 154 | 5.7 | 整理文档 | manual | 1d | 2018-01-19 | 2018-01-19 | 150 | 邱英凡; 任剑超; 史晨鑫; 汪涛; 仲叶 | 10h | 309.7 |
