# 需求工程甘特图

Schedule from MS Project, 2017-10-26 to 2018-01-18, 2 hours a day, costs in ¥, A marks actual dates.
user

## Calendars

- G23的日历: Mon-Sun 08:00-10:00.

## Resources

| Resource | Rate |
| --- | --- |
| 仲叶 | 30.97 |
| 汪涛 | 30.97 |
| 史晨鑫 | 30.97 |
| 任剑超 | 30.97 |
| 邱英凡 | 30.97 |

## Schedule

| ID | WBS | Task | Type | Duration | Start | Finish | Predecessors | Complete | Actual start | Actual finish | Resources | Work | Actual work | Cost | Actual cost |
| --- | --- | --- | --- | --- | --- | --- | --- | --- | --- | --- | --- | --- | --- | --- | --- |
| 1 | 1 | **执行阶段** |  | 51d | 2017-11-01 | 2017-12-21 |  | 100% | 2017-10-26 | 2018-01-18 |  | 133.2h | 133.2h | 4,125.2 | 4,125.2 |
| 2 | 1.1 | wbs修改 | manual | 1d | 2017-11-01 A | 2017-11-01 A |  | 100% |  |  | 仲叶 [20%]; 汪涛 [20%] | 2h | 2h | 61.94 | 61.94 |
| 3 | 1.2 | **需求工程** |  | 79d | 2017-11-01 | 2018-01-18 A |  | 100% | 2017-10-26 |  |  | 131.2h | 131.2h | 4,063.26 | 4,063.26 |
| 4 | 1.2.1 | 小组会议 | milestone, manual | 0d | 2017-11-02 A | 2017-11-02 A |  | 100% |  |  |  |  |  |  |  |
| 5 | 1.2.2 | 需求工程项目计划V0.1 | milestone, manual | 0d | 2017-10-26 A | 2017-10-26 A |  | 100% |  |  | 邱英凡 |  |  |  |  |
| 6 | 1.2.3 | 小组会议 | milestone, manual | 0d | 2017-10-29 A | 2017-10-29 A |  | 100% |  |  |  |  |  |  |  |
| 7 | 1.2.4 | 小组会议 | milestone, manual | 0d | 2017-10-30 A | 2017-10-30 A |  | 100% |  |  |  |  |  |  |  |
| 8 | 1.2.5 | 小组会议 | milestone, manual | 0d | 2017-10-31 A | 2017-10-31 A |  | 100% |  |  |  |  |  |  |  |
| 9 | 1.2.6 | 小组会议 | milestone, manual | 0d | 2017-11-01 A | 2017-11-01 A |  | 100% |  |  |  |  |  |  |  |
| 10 | 1.2.7 | 小组会议 | milestone, manual | 0d | 2017-11-02 A | 2017-11-02 A |  | 100% |  |  |  |  |  |  |  |
| 11 | 1.2.8 | 需求工程项目计划V0.2 | manual | 1d | 2017-11-02 A | 2017-11-02 A |  | 100% |  |  | 史晨鑫 [20%]; 汪涛 [20%] | 4h | 4h | 123.88 | 123.88 |
| 12 | 1.2.9 | 需求工程项目计划V1.0 | manual | 1d | 2017-11-03 A | 2017-11-03 A |  | 100% |  |  | 史晨鑫 [20%]; 汪涛 [20%]; 仲叶 [20%] | 6h | 6h | 185.82 | 185.82 |
| 13 | 1.2.10 | 需求工程项目计划V1.0.1 | manual | 1d | 2017-11-28 A | 2017-11-28 A |  | 100% |  |  | 邱英凡 | 2h | 2h | 61.94 | 61.94 |
| 14 | 1.2.11 | **需求获取** |  | 38d | 2017-11-03 A | 2017-12-10 |  | 100% |  | 2018-01-15 |  | 54.6h | 54.6h | 1,690.96 | 1,690.96 |
| 15 | 1.2.11.1 | 小组会议 | manual | 1d | 2017-11-03 A | 2017-11-03 A |  | 100% |  |  |  |  |  |  |  |
| 16 | 1.2.11.2 | 项目章程 | manual | 1d | 2017-11-03 A | 2017-11-03 A |  | 100% |  |  | 邱英凡 [20%] | 2h | 2h | 61.94 | 61.94 |
| 17 | 1.2.11.3 | 愿景和范围文档V0.1 | milestone, manual | 6d | 2017-11-03 A | 2017-11-08 A |  | 100% |  |  | 邱英凡 [20%]; 史晨鑫; 汪涛; 仲叶 | 2.4h | 2.4h | 74.33 | 74.33 |
| 18 | 1.2.11.4 | 小组会议 | manual | 1d | 2017-11-05 A | 2017-11-05 A |  | 100% |  |  |  |  |  |  |  |
| 19 | 1.2.11.5 | 识别用户群、选择产品代言人 |  | 3d | 2017-11-04 A | 2017-11-06 A | 17 | 100% |  |  | 史晨鑫 [20%]; 汪涛 [20%] | 2.4h | 2.4h | 74.33 | 74.33 |
| 20 | 1.2.11.6 | 用户群分类V0.1 | milestone, manual | 2d | 2017-11-05 A | 2017-11-06 A |  | 100% |  |  | 仲叶 [20%] | 4h | 4h | 123.88 | 123.88 |
| 21 | 1.2.11.7 | 小组会议 | manual | 1d | 2017-11-10 A | 2017-11-10 A |  | 100% |  |  |  |  |  |  |  |
| 22 | 1.2.11.8 | 组织焦点小组 | manual | 4d | 2017-11-08 A | 2017-11-11 A | 17 | 100% |  |  | 邱英凡 [20%]; 仲叶 [20%] | 3h | 3h | 92.91 | 92.91 |
| 23 | 1.2.11.9 | 识别用户需求 | manual | 8d | 2017-11-08 A | 2017-11-16 A | 17 | 100% |  |  | 任剑超 [20%]; 史晨鑫 [20%] | 6.4h | 6.4h | 198.21 | 198.21 |
| 24 | 1.2.11.10 | 用户群分类V0.2 | manual | 1d | 2017-11-12 A | 2017-11-12 A |  | 100% |  |  | 仲叶 [20%] | 2h | 2h | 61.94 | 61.94 |
| 25 | 1.2.11.11 | 小组会议 | milestone, manual | 0d | 2017-11-13 A | 2017-11-13 A |  | 100% |  |  |  |  |  |  |  |
| 26 | 1.2.11.12 | 需求获取访谈 | manual | 28d | 2017-11-13 A | 2017-12-10 A | 23 | 100% |  |  | 汪涛 [10%]; 仲叶; 邱英凡; 任剑超 [10%]; 史晨鑫 | 6h | 6h | 185.82 | 185.82 |
| 27 | 1.2.11.13 | 小组会议 | milestone, manual | 0d | 2017-11-17 A | 2017-11-17 A |  | 100% |  |  |  |  |  |  |  |
| 28 | 1.2.11.14 | 举行需求获取讨论会 | manual | 2d | 2017-11-09 A | 2017-11-10 A | 27 | 100% |  |  | 邱英凡 [10%]; 任剑超 [10%]; 史晨鑫 [10%]; 汪涛 [10%]; 仲叶 [10%] | 2h | 2h | 61.94 | 61.94 |
| 29 | 1.2.11.15 | 分发调查问卷 | manual | 3d | 2017-11-09 A | 2017-11-11 A | 27 | 100% |  |  | 仲叶 [20%] | 1.2h | 1.2h | 37.16 | 37.16 |
| 30 | 1.2.11.16 | 分析文档 | manual | 8d | 2017-11-12 A | 2017-11-19 A | 29 | 100% |  |  | 任剑超 [20%]; 史晨鑫 [20%]; 汪涛 | 9.6h | 9.6h | 297.31 | 297.31 |
| 31 | 1.2.11.17 | 重用已有的需求 | manual | 24d | 2017-11-15 A | 2017-12-08 A | 27 | 100% |  |  | 邱英凡; 任剑超 [20%]; 史晨鑫; 仲叶 | 9.6h | 9.6h | 297.31 | 297.31 |
| 32 | 1.2.11.18 | 项目章程 | manual | 1d | 2017-11-18 A | 2017-11-18 A |  | 100% |  |  | 汪涛 | 2h | 2h | 61.94 | 61.94 |
| 33 | 1.2.11.19 | 用户群分类V1.0 | manual | 1d | 2017-11-23 A | 2017-11-23 A |  | 100% |  |  | 仲叶 | 2h | 2h | 61.94 | 61.94 |
| 34 | 1.2.11.20 | 愿景和范围文档V0.2 | milestone, manual | 0d | 2017-11-23 A | 2017-11-23 A |  | 100% |  |  | 史晨鑫 |  |  |  |  |
| 35 | 1.2.11.21 | 可行性分析V1.0 | milestone, manual | 0d | 2017-11-23 A | 2017-11-23 A |  | 100% |  |  | 仲叶 |  |  |  |  |
| 36 | 1.2.11.22 | 愿景和范围文档V1.0 | milestone, manual | 0d | 2017-11-29 A | 2017-11-29 A |  | 100% |  |  | 邱英凡 |  |  |  |  |
| 37 | 1.2.11.23 | 愿景和范围文档V1.1 | milestone, manual | 0d | 2017-12-15 A | 2017-12-15 A |  | 100% |  |  | 汪涛 |  |  |  |  |
| 38 | 1.2.11.24 | 愿景和范围文档V1.2 | milestone, manual | 0d | 2018-01-15 A | 2018-01-15 A |  | 100% |  |  | 邱英凡 |  |  |  |  |

Notes:
- 2: 仲叶
- 5: 汪涛
- 11: 汪涛
- 12: 史晨鑫
- 13: 邱英凡
- 16: 邱英凡
- 17: 史晨鑫
- 20: 仲叶
- 24: 仲叶
- 32: 汪涛
- 33: 仲叶
- 34: 史晨鑫
- 35: 仲叶
- 36: 史晨鑫
- 37: 史晨鑫
- 38: 史晨鑫

| ID | WBS | Task | Type | Duration | Start | Finish | Predecessors | Complete | Actual finish | Resources | Work | Actual work | Cost | Actual cost |
| --- | --- | --- | --- | --- | --- | --- | --- | --- | --- | --- | --- | --- | --- | --- |
| 39 | 1.2.12 | **需求分析** |  | 56d | 2017-11-24 A | 2018-01-18 |  | 100% | 2018-01-17 |  | 27.4h | 27.4h | 848.58 | 848.58 |
| 40 | 1.2.12.1 | 小组会议 | milestone, manual | 0d | 2017-11-24 A | 2017-11-24 A |  | 100% |  |  |  |  |  |  |
| 41 | 1.2.12.2 | 应用环境建模 | manual | 2d | 2017-11-24 A | 2017-11-25 A | 30 | 100% |  | 任剑超 [20%] | 1h | 1h | 30.97 | 30.97 |
| 42 | 1.2.12.3 | 创建原型 | manual | 2d | 2017-11-26 A | 2017-11-27 A | 30 | 100% |  | 史晨鑫 [20%]; 汪涛 [20%] | 2h | 2h | 61.94 | 61.94 |
| 43 | 1.2.12.4 | 小组会议 | milestone, manual | 0d | 2017-11-27 A | 2017-11-27 A |  | 100% |  |  |  |  |  |  |
| 44 | 1.2.12.5 | 用户群分类V1.1 | manual | 1d | 2017-11-28 A | 2017-11-28 A |  | 100% |  | 邱英凡 | 2h | 2h | 61.94 | 61.94 |
| 45 | 1.2.12.6 | 分析实现可行性 | manual | 2d | 2017-11-28 A | 2017-11-29 A | 30 | 100% |  | 史晨鑫 [20%]; 仲叶 [20%] | 2h | 2h | 61.94 | 61.94 |
| 46 | 1.2.12.7 | 小组会议 | milestone, manual | 0d | 2017-11-30 A | 2017-11-30 A |  | 100% |  |  |  |  |  |  |
| 47 | 1.2.12.8 | 排列需求优先级 | manual | 1d | 2017-12-01 A | 2017-12-01 A | 30 | 100% |  | 汪涛 [20%]; 仲叶 [20%] | 0.8h | 0.8h | 24.78 | 24.78 |
| 48 | 1.2.12.9 | 创建数字字典 | manual | 2d | 2017-12-03 A | 2017-12-04 A | 47 | 100% |  | 仲叶 | 4h | 4h | 123.88 | 123.88 |
| 49 | 1.2.12.10 | 测试用例V0.1 | milestone, manual | 1d | 2017-12-03 A | 2017-12-03 A |  | 100% |  | 任剑超; 史晨鑫; 汪涛 | 6h | 6h | 185.82 | 185.82 |
| 50 | 1.2.12.11 | 需求建模 | manual | 2d | 2017-12-05 A | 2017-12-06 A | 41 | 100% |  | 邱英凡 [20%]; 任剑超 [20%]; 仲叶 [20%] | 2.4h | 2.4h | 74.33 | 74.33 |
| 51 | 1.2.12.12 | 分析接口 | manual | 2d | 2017-12-07 A | 2017-12-08 A | 50 | 100% |  | 任剑超 [20%]; 史晨鑫 [20%] | 1.6h | 1.6h | 49.55 | 49.55 |
| 52 | 1.2.12.13 | 小组会议 | milestone, manual | 0d | 2017-12-08 A | 2017-12-08 A |  | 100% |  |  |  |  |  |  |
| 53 | 1.2.12.14 | 将需求分配到子接口 | manual | 2d | 2017-12-09 A | 2017-12-10 A | 51 | 100% |  | 汪涛 [20%]; 仲叶 [20%] | 1.6h | 1.6h | 49.55 | 49.55 |
| 54 | 1.2.12.15 | 用户群分类V1.2 | manual | 1d | 2017-12-24 A | 2017-12-24 A |  | 100% |  | 仲叶 [20%] | 2h | 2h | 61.94 | 61.94 |
| 55 | 1.2.12.16 | 用户群分类V1.3 | milestone, manual | 0d | 2018-01-16 A | 2018-01-16 A |  | 100% |  | 邱英凡 |  |  |  |  |
| 56 | 1.2.12.17 | 需求可行性分析 | manual | 1d | 2018-01-17 A | 2018-01-17 A |  | 100% |  | 汪涛 [20%]; 史晨鑫 | 2h | 2h | 61.94 | 61.94 |
| 57 | 1.2.13 | **规范说明** |  | 41d | 2017-12-03 A | 2018-01-12 |  | 100% | 2018-01-18 |  | 26.8h | 26.8h | 830 | 830 |
| 58 | 1.2.13.1 | 描述非功能性需求 | manual | 1d | 2017-12-03 A | 2017-12-03 A | 64 | 100% |  | 史晨鑫 [20%]; 汪涛 [20%]; 邱英凡 [20%] | 1.2h | 1.2h | 37.16 | 37.16 |
| 59 | 1.2.13.2 | 软件需求规格说明书V0.1 | milestone, manual | 1d | 2017-12-03 A | 2017-12-03 A |  | 100% |  | 任剑超 [20%]; 史晨鑫 [20%]; 汪涛 [20%] | 1.2h | 1.2h | 37.16 | 37.16 |
| 60 | 1.2.13.3 | 软件需求规格说明书V0.3 | manual | 1d | 2017-12-11 A | 2017-12-11 A |  | 100% |  | 任剑超 [20%]; 汪涛 [20%] | 0.8h | 0.8h | 24.78 | 24.78 |
| 61 | 1.2.13.4 | 软件需求规格说明书V0.4 | manual | 1d | 2017-12-13 A | 2017-12-13 A |  | 100% |  | 汪涛 [20%] | 0.4h | 0.4h | 12.39 | 12.39 |
| 62 | 1.2.13.5 | 小组会议 | milestone, manual | 0d | 2017-12-15 A | 2017-12-15 A |  | 100% |  |  |  |  |  |  |
| 63 | 1.2.13.6 | 软件需求规格说明书V0.5 | manual | 1d | 2017-12-16 A | 2017-12-16 A |  | 100% |  | 任剑超 [20%]; 汪涛 [20%] | 0.8h | 0.8h | 24.78 | 24.78 |
| 64 | 1.2.13.7 | 识别需求源头 | manual | 1d | 2017-12-16 A | 2017-12-16 A | 42 | 100% |  | 邱英凡 [20%]; 仲叶 [20%]; 任剑超 [20%] | 1.2h | 1.2h | 37.16 | 37.16 |
| 65 | 1.2.13.8 | 用户手册V0.1 | milestone, manual | 1d | 2017-12-16 A | 2017-12-16 A | 13 | 100% |  | 史晨鑫 | 2h | 2h | 61.94 | 61.94 |
| 66 | 1.2.13.9 | 为每个需求分配唯一标识 | manual | 1d | 2017-12-17 A | 2017-12-17 A | 64 | 100% |  | 邱英凡 [20%]; 史晨鑫 [20%]; 仲叶 [20%] | 1.2h | 1.2h | 37.16 | 37.16 |
| 67 | 1.2.13.10 | 记录业务规则 | manual | 1d | 2017-12-18 A | 2017-12-18 A |  | 100% |  | 任剑超 [20%]; 汪涛 [20%]; 邱英凡 [20%] | 1.2h | 1.2h | 37.16 | 37.16 |
| 68 | 1.2.13.11 | 测试用例V0.2 | manual | 1d | 2017-12-20 A | 2017-12-20 A |  | 100% |  | 汪涛 | 2h | 2h | 61.94 | 61.94 |
| 69 | 1.2.13.12 | 用例文档V1.0 | manual | 1d | 2017-12-21 A | 2017-12-21 A |  | 100% |  | 汪涛 | 2h | 2h | 61.94 | 61.94 |
| 70 | 1.2.13.13 | 小组会议 | manual | 1d | 2017-12-22 A | 2017-12-22 A |  | 100% |  |  |  |  |  |  |
| 71 | 1.2.13.14 | 用户手册V1.0 | manual | 1d | 2017-12-22 A | 2017-12-22 A | 65 | 100% |  | 史晨鑫 | 2h | 2h | 61.94 | 61.94 |
| 72 | 1.2.13.15 | srs组内评审 | milestone, manual | 0d | 2017-12-22 A | 2017-12-22 A |  | 100% |  |  |  |  |  |  |
| 73 | 1.2.13.16 | 软件需求规格说明书V1.0.0 | manual | 1d | 2017-12-22 A | 2017-12-22 A |  | 100% |  | 汪涛 [20%] | 0.4h | 0.4h | 12.39 | 12.39 |
| 74 | 1.2.13.17 | 测试用例V1.0 | manual | 1d | 2017-12-23 A | 2017-12-23 A |  | 100% |  | 任剑超 | 2h | 2h | 61.94 | 61.94 |
| 75 | 1.2.13.18 | 软件需求规格说明书V1.0.1 | manual | 1d | 2018-01-09 A | 2018-01-09 A |  | 100% |  | 汪涛 [20%]; 邱英凡; 仲叶 | 4.4h | 4.4h | 136.27 | 136.27 |
| 76 | 1.2.13.19 | 用例文档V1.0.1 | manual | 1d | 2018-01-11 A | 2018-01-11 A |  | 100% |  | 汪涛 | 2h | 2h | 61.94 | 61.94 |
| 77 | 1.2.13.20 | 软件需求规格说明书V1.0.2 | manual | 1d | 2018-01-18 A | 2018-01-18 A | 101 | 100% |  | 仲叶 | 2h | 2h | 61.94 | 61.94 |

Notes:
- 44: 邱英凡
- 54: 仲叶
- 55: 仲叶
- 56: 汪涛

| ID | WBS | Task | Type | Duration | Start | Finish | Predecessors | Complete | Actual finish | Resources | Work | Actual work | Cost | Actual cost |
| --- | --- | --- | --- | --- | --- | --- | --- | --- | --- | --- | --- | --- | --- | --- |
| 78 | 1.2.14 | **需求验证** |  | 12.5d | 2017-12-11 A | 2017-12-19 |  | 100% | 2017-12-18 |  | 10.4h | 10.4h | 322.09 | 322.09 |
| 79 | 1.2.14.1 | 评审需求 | manual | 4d | 2017-12-11 A | 2017-12-14 A |  | 100% |  | 任剑超 [20%]; 邱英凡 [20%] | 3.2h | 3.2h | 99.1 | 99.1 |
| 80 | 1.2.14.2 | 测试需求 | manual | 2d | 2017-12-12 A | 2017-12-13 A |  | 100% |  | 史晨鑫 [20%]; 汪涛 [20%]; 仲叶 [20%] | 2.4h | 2.4h | 74.33 | 74.33 |
| 81 | 1.2.14.3 | 定义验收条件 | manual | 6d | 2017-12-13 A | 2017-12-18 A | 79 | 100% |  | 邱英凡 [20%]; 任剑超 [20%] | 4.8h | 4.8h | 148.66 | 148.66 |
| 83 | 1.3 | wbs修改 | manual | 1d | 2017-12-17 A | 2017-12-17 A |  | 100% |  | 史晨鑫 [5%]; 邱英凡 [5%]; 任剑超 [5%]; 汪涛 [5%]; 仲叶 [5%] | 0.5h | 0.5h | 15.49 | 15.49 |
| 84 | 1.4 | 小组会议 | milestone, manual | 0d | 2017-12-29 A | 2017-12-29 A |  | 100% |  |  |  |  |  |  |
| 85 | 1.5 | **需求管理** |  | 27d | 2017-12-17 A | 2018-01-12 |  | 100% | 2018-01-11 |  | 31.5h | 31.5h | 975.55 | 975.55 |
| 86 | 1.5.1 | 建立变更控制流程 | manual | 2d | 2017-12-17 A | 2017-12-18 A |  | 100% |  | 邱英凡 [20%]; 汪涛 [20%]; 仲叶 [20%] | 2.4h | 2.4h | 74.33 | 74.33 |
| 87 | 1.5.2 | 分析变更影响 | manual | 2d | 2017-12-19 A | 2017-12-20 A | 86 | 100% |  | 任剑超 [20%]; 史晨鑫 [20%]; 仲叶 [20%] | 2.4h | 2.4h | 74.33 | 74.33 |
| 88 | 1.5.3 | 建立基线，管理需求版本 | manual | 2d | 2017-12-19 A | 2017-12-20 A |  | 100% |  | 任剑超 [20%]; 汪涛 [20%] | 1.6h | 1.6h | 49.55 | 49.55 |
| 89 | 1.5.4 | 小组会议 | milestone, manual | 0d | 2017-12-22 A | 2017-12-22 A |  | 100% |  |  |  |  |  |  |
| 90 | 1.5.5 | 使用需求管理工具 | manual | 2d | 2017-12-24 A | 2017-12-25 A | 50 | 100% |  | 邱英凡 [20%]; 任剑超 [20%]; 史晨鑫 [20%]; 汪涛 [20%]; 仲叶 [20%] | 4h | 4h | 123.88 | 123.88 |
| 91 | 1.5.6 | 小组会议 | manual | 1d | 2017-12-24 A | 2017-12-24 A |  | 100% |  |  |  |  |  |  |
| 92 | 1.5.7 | 跟踪需求状态 | manual | 1d | 2018-01-04 A | 2018-01-04 A |  | 100% |  | 汪涛 [20%]; 仲叶 [20%]; 邱英凡 [20%] | 1.2h | 1.2h | 37.16 | 37.16 |
| 93 | 1.5.8 | 跟踪需求问题 | manual | 1d | 2018-01-05 A | 2018-01-05 A |  | 100% |  | 邱英凡 [20%]; 史晨鑫 [20%]; 仲叶 [20%] | 1.2h | 1.2h | 37.16 | 37.16 |
| 94 | 1.5.9 | 测试用例V1.0.1 | manual | 1d | 2018-01-09 A | 2018-01-09 A |  | 100% |  | 邱英凡 | 2h | 2h | 61.94 | 61.94 |
| 95 | 1.5.10 | 维护变更历史 | manual | 1d | 2018-01-11 A | 2018-01-11 A | 86 | 100% |  | 邱英凡 [20%]; 史晨鑫 [20%]; 仲叶 [20%] | 1.2h | 1.2h | 37.16 | 37.16 |
| 96 | 1.5.11 | 需求变更影响分析报告V0.1 | manual | 1d | 2018-01-03 A | 2018-01-03 A |  | 100% |  | 邱英凡 [20%]; 任剑超 [20%]; 史晨鑫 [20%]; 汪涛 [20%]; 仲叶 [20%] | 2h | 2h | 61.94 | 61.94 |
| 97 | 1.5.12 | 需求变更影响分析报告V1.0 | manual | 1d | 2018-01-10 A | 2018-01-10 A | 96 | 100% |  | 仲叶 | 2h | 2h | 61.94 | 61.94 |
| 98 | 1.5.13 | CCB章程 | manual | 1d | 2018-01-10 A | 2018-01-10 A |  | 100% |  | 仲叶 | 2h | 2h | 61.94 | 61.94 |
| 99 | 1.5.14 | CCB章程 | manual | 1d | 2018-01-11 A | 2018-01-11 A | 98 | 100% |  | 仲叶 | 2h | 2h | 61.94 | 61.94 |
| 100 | 1.5.15 | 需求变更组内评审 | milestone, manual | 0d | 2018-01-11 A | 2018-01-11 A |  | 100% |  |  |  |  |  |  |
| 101 | 1.5.16 | 软件需求变更申请文档V1.0 | manual | 1d | 2018-01-11 A | 2018-01-11 A | 73 | 100% |  | 汪涛 | 2h | 2h | 61.94 | 61.94 |
| 102 | 1.5.17 | 需求变更影响分析报告V1.0.1 | manual | 1d | 2018-01-11 A | 2018-01-11 A | 101 | 100% |  | 史晨鑫; 仲叶 | 4h | 4h | 123.88 | 123.88 |
| 103 | 1.5.18 | 维护需求可跟踪矩阵 | manual | 1d | 2018-01-11 A | 2018-01-11 A |  | 100% |  | 邱英凡 [25%]; 任剑超 [25%]; 史晨鑫 [25%] | 1.5h | 1.5h | 46.45 | 46.45 |

Notes:
- 83: 任剑超

| ID | WBS | Task | Type | Duration | Start | Finish | Predecessors | Complete | Actual start | Actual finish | Resources | Work | Actual work | Cost | Actual cost |
| --- | --- | --- | --- | --- | --- | --- | --- | --- | --- | --- | --- | --- | --- | --- | --- |
| 104 | 1.6 | **需求知识** |  | 6d | 2017-12-25 A | 2017-12-30 |  | 100% |  | 2017-12-29 |  | 7.2h | 7.2h | 222.98 | 222.98 |
| 105 | 1.6.1 | 培训业务分析师 | manual | 1d | 2017-12-25 A | 2017-12-25 A |  | 100% |  |  | 汪涛 [20%]; 仲叶 [20%] | 0.8h | 0.8h | 24.78 | 24.78 |
| 106 | 1.6.2 | 向干系人讲解需求内容 | manual | 2d | 2017-12-26 A | 2017-12-27 A |  | 100% |  |  | 任剑超 [20%]; 史晨鑫 [20%] | 1.6h | 1.6h | 49.55 | 49.55 |
| 107 | 1.6.3 | 向开发人员讲应用领域知识 | manual | 1d | 2017-12-27 A | 2017-12-27 A |  | 100% |  |  | 邱英凡 [20%] | 0.4h | 0.4h | 12.39 | 12.39 |
| 108 | 1.6.4 | 定义一个需求工程流程 | manual | 3d | 2017-12-26 A | 2017-12-28 A | 105 | 100% |  |  | 邱英凡 [20%]; 史晨鑫 [20%]; 仲叶 [20%] | 3.6h | 3.6h | 111.49 | 111.49 |
| 109 | 1.6.5 | 小组会议 | milestone, manual | 0d | 2017-12-29 A | 2017-12-29 A |  | 100% |  |  |  |  |  |  |  |
| 110 | 1.6.6 | 建立一个词汇表 | manual | 1d | 2017-12-29 A | 2017-12-29 A |  | 100% |  |  | 任剑超 [20%]; 汪涛 [20%] | 0.8h | 0.8h | 24.78 | 24.78 |
| 111 | 1.7 | **项目管理** |  | 14d | 2017-12-30 | 2018-01-12 A |  | 100% | 2017-12-29 |  |  | 32.8h | 32.8h | 1,015.82 | 1,015.82 |
| 112 | 1.7.1 | 选择合适的生命周期模型 | manual | 1d | 2017-12-30 A | 2017-12-30 A |  | 100% |  |  | 邱英凡 [20%]; 汪涛 [20%]; 仲叶 [20%] | 1.2h | 1.2h | 37.16 | 37.16 |
| 113 | 1.7.2 | 规划需求方案 | manual | 8d | 2017-12-29 A | 2018-01-05 A | 108 | 100% |  |  | 任剑超 [20%]; 史晨鑫 [20%]; 汪涛 [20%] | 9.6h | 9.6h | 297.31 | 297.31 |
| 114 | 1.7.3 | 系统设计与实现计划V1.0 | milestone, manual | 1d | 2018-01-01 A | 2018-01-01 A |  | 100% |  |  | 任剑超 [20%]; 汪涛 [20%] | 0.8h | 0.8h | 24.78 | 24.78 |
| 115 | 1.7.4 | 估算需求工作量 | manual | 2d | 2018-01-06 A | 2018-01-07 A | 113 | 100% |  |  | 邱英凡 [20%]; 汪涛 [20%] | 1.6h | 1.6h | 49.55 | 49.55 |
| 116 | 1.7.5 | 基于需求做计划 | manual | 2d | 2018-01-06 A | 2018-01-07 A | 113 | 100% |  |  | 汪涛 [20%]; 仲叶 [20%] | 1.6h | 1.6h | 49.55 | 49.55 |
| 117 | 1.7.6 | 发现需求决策者 | manual | 1d | 2018-01-06 A | 2018-01-06 A |  | 100% |  |  | 邱英凡 [20%]; 汪涛 [20%]; 仲叶 [20%] | 1.2h | 1.2h | 37.16 | 37.16 |
| 118 | 1.7.7 | 小组会议 | manual | 1d | 2018-01-07 A | 2018-01-07 A |  | 100% |  |  |  |  |  |  |  |
| 119 | 1.7.8 | srs修改 | manual | 1d | 2018-01-09 A | 2018-01-09 A | 73 | 100% |  |  | 邱英凡; 汪涛; 仲叶 | 6h | 6h | 185.82 | 185.82 |
| 120 | 1.7.9 | 重新协商承诺 | manual | 2d | 2018-01-07 A | 2018-01-08 A | 118 | 100% |  |  | 邱英凡 [20%]; 仲叶 [20%] | 1.6h | 1.6h | 49.55 | 49.55 |
| 121 | 1.7.10 | 管理需求风险 | manual | 2d | 2018-01-09 A | 2018-01-10 A | 113 | 100% |  |  | 邱英凡 [20%]; 仲叶 [20%] | 1.6h | 1.6h | 49.55 | 49.55 |
| 122 | 1.7.11 | 跟踪记录需求工作量 | manual | 2d | 2018-01-09 A | 2018-01-10 A |  | 100% |  |  | 任剑超 [20%]; 仲叶 [20%] | 1.6h | 1.6h | 49.55 | 49.55 |
| 123 | 1.7.12 | wbs修改 | manual | 1d | 2018-01-11 A | 2018-01-11 A | 83 | 100% |  |  | 仲叶 | 2h | 2h | 61.94 | 61.94 |
| 124 | 1.7.13 | 变更控制及影响说明 | manual | 1d | 2018-01-11 A | 2018-01-11 A | 96 | 100% |  |  | 邱英凡 [20%]; 任剑超 [20%]; 史晨鑫 [20%]; 汪涛 [20%]; 仲叶 [20%] | 2h | 2h | 61.94 | 61.94 |
| 125 | 1.7.14 | 回顾学到的经验 | manual | 1d | 2018-01-12 A | 2018-01-12 A |  | 100% |  |  | 邱英凡 [20%]; 任剑超 [20%]; 史晨鑫 [20%]; 汪涛 [20%]; 仲叶 [20%] | 2h | 2h | 61.94 | 61.94 |
| 126 | 1.7.15 | 小组会议 | milestone, manual | 0d | 2018-01-12 A | 2018-01-12 A |  | 100% |  |  |  |  |  |  |  |
